# Planning

Schedule from MS Project, 2017-02-13 to 2017-03-31, costs in €, A marks actual dates.

## Calendars

- Standard: Mon 08:20-10:00, 10:20-12:20; Tue off; Wed-Fri 08:20-10:00, 10:20-12:20; Sat-Sun off. Exceptions (off unless hours are given): 2017-02-27 to 2017-03-03 (Carnaval).

## Resources

| Resource | Rate |
| --- | --- |
| Patrick van Batenburg | 55 |
| Steven Logghe | 55 |

## Schedule

| ID | WBS | Task | Type | Duration | Start | Finish | Predecessors | Complete | Constraint | Deadline | Resources | Work | Actual work | Cost | Actual cost |
| --- | --- | --- | --- | --- | --- | --- | --- | --- | --- | --- | --- | --- | --- | --- | --- |
| 1 | 1 | **Inception Phase** |  | 1.83d | 2017-02-13 08:00 A | 2017-02-17 17:00 A |  | 100% |  | 2017-02-24 17:00 |  | 44.67h | 44.67h | 2,456.67 | 2,456.67 |
| 2 | 1.1 | Interview voorbereiden |  | 480min | 2017-02-13 08:00 A | 2017-02-13 17:00 A |  | 100% | finish no earlier than 2017-02-13 17:00 |  | Patrick van Batenburg | 8h | 8h | 440 | 440 |
| 3 | 1.2 | Hernieuwde opdracht |  | 930min | 2017-02-13 08:30 A | 2017-02-15 10:50 A | 2 | 100% | finish no earlier than 2017-02-14 17:00 |  | Patrick van Batenburg | 15.5h | 15.5h | 852.5 | 852.5 |
| 4 | 1.3 | Offerte |  | 50min | 2017-02-15 08:00 A | 2017-02-15 08:50 A | 3 | 100% |  |  | Patrick van Batenburg | 0.83h | 0.83h | 45.83 | 45.83 |
| 5 | 1.4 | Prototype van shermen gebaseerd op interview |  | 60min | 2017-02-16 08:00 A | 2017-02-16 09:00 A | 4 | 100% |  |  | Steven Logghe | 1h | 1h | 55 | 55 |
| 6 | 1.5 | Prototype toelichting volgordelijkheid |  | 40min | 2017-02-16 08:30 A | 2017-02-16 09:10 A | 5 | 100% |  |  | Patrick van Batenburg | 0.67h | 0.67h | 36.67 | 36.67 |
| 7 | 1.6 | Plan van aanpak |  | 930min | 2017-02-16 08:30 A | 2017-02-17 17:00 A | 6 | 100% | finish no earlier than 2017-02-17 17:00 |  | Patrick van Batenburg | 15.5h | 15.5h | 852.5 | 852.5 |
| 8 | 1.7 | Globale planning voor het gehele project in een planningstool (bijvoorbeeld in MS-Project) |  | 30min | 2017-02-13 08:00 A | 2017-02-13 08:30 A | 7 | 100% |  |  | Patrick van Batenburg | 0.5h | 0.5h | 27.5 | 27.5 |
| 9 | 1.8 | Functioneel Ontwerp inclusief taakverdeeling |  | 40min | 2017-02-17 08:00 A | 2017-02-17 09:00 A | 8 | 100% |  |  | Patrick van Batenburg | 0.67h | 0.67h | 36.67 | 36.67 |
| 10 | 1.9 | **Use-case diagram** |  | 0.04d | 2017-02-16 08:00 A | 2017-02-16 08:40 A | 9 | 100% |  |  |  | 0.5h | 0.5h | 27.5 | 27.5 |
| 11 | 1.9.1 | Selecteer actoren en use-cases en plaats een titel boven het te maken diagram |  | 20min | 2017-02-16 08:00 A | 2017-02-16 08:40 A |  | 100% |  |  | Steven Logghe | 0.33h | 0.33h | 18.33 | 18.33 |
| 12 | 1.9.2 | Bepaal per use-case welke actor(en) verantwoordelijk zijn |  | 10min | 2017-02-16 08:00 A | 2017-02-16 08:30 A |  | 100% |  |  | Steven Logghe | 0.17h | 0.17h | 9.17 | 9.17 |
| 13 | 1.10 | **Use-case templates** |  | 0.06d | 2017-02-16 08:00 A | 2017-02-16 08:50 A | 10 | 100% |  |  |  | 0.67h | 0.67h | 36.67 | 36.67 |
| 14 | 1.10.1 | Selecteer actoren en plaats een titel boven het te maken template |  | 10min | 2017-02-16 08:00 A | 2017-02-16 08:30 A |  | 100% |  |  | Steven Logghe | 0.17h | 0.17h | 9.17 | 9.17 |
| 15 | 1.10.2 | Use-case templates maken doormiddel van de use-case diagrammen |  | 30min | 2017-02-16 08:00 A | 2017-02-16 08:50 A |  | 100% |  |  | Steven Logghe | 0.5h | 0.5h | 27.5 | 27.5 |
| 16 | 1.11 | **Activiteitendiagrammen** |  | 0.04d | 2017-02-17 08:20 A | 2017-02-17 08:40 A | 13 | 100% |  |  |  | 0.83h | 0.83h | 45.83 | 45.83 |
| 17 | 1.11.1 | Selecteer operaties en/of use-cases en plaats een titel boven het te maken diagram |  | 20min | 2017-02-17 08:20 A | 2017-02-17 08:40 A |  | 100% | start no earlier than 2017-02-17 08:00 |  | Steven Logghe | 0.33h | 0.33h | 18.33 | 18.33 |
| 18 | 1.11.2 | Vind de activiteiten en de bijbehorende flow of control |  | 20min | 2017-02-17 08:20 A | 2017-02-17 08:40 A |  | 100% | start no earlier than 2017-02-17 08:20 |  | Steven Logghe | 0.33h | 0.33h | 18.33 | 18.33 |
| 19 | 1.11.3 | Bepaal per activiteit welk object verantwoordelijk is |  | 10min | 2017-02-17 08:20 A | 2017-02-17 08:30 A |  | 100% | start no earlier than 2017-02-17 08:20 |  | Steven Logghe | 0.17h | 0.17h | 9.17 | 9.17 |
| 20 | 2 | End Inception Phase | milestone | 0d | 2017-02-24 08:00 A | 2017-02-24 08:00 A | 1 | 100% | start no earlier than 2017-02-24 08:00 | 2017-02-24 17:00 |  |  |  |  |  |
| 21 | 3 | **Elaboration Phase** |  | 1.38d | 2017-02-20 08:00 A | 2017-02-23 12:20 A | 20 | 100% |  | 2017-02-24 17:00 |  | 5.58h | 5.58h | 307.08 | 307.08 |
| 22 | 3.1 | Technisch Ontwerp inclusief taakverdeling |  | 50min | 2017-02-23 08:00 A | 2017-02-23 09:10 A | 20 | 100% |  |  | Patrick van Batenburg | 0.83h | 0.83h | 45.83 | 45.83 |
| 23 | 3.2 | Modeldictionary |  | 220min | 2017-02-22 08:00 A | 2017-02-22 12:20 A | 22 | 100% | finish no earlier than 2017-02-22 17:00 |  | Patrick van Batenburg | 0.33h | 0.33h | 18.33 | 18.33 |
| 24 | 3.3 | Klassendiagram |  | 30min | 2017-02-20 08:00 A | 2017-02-20 08:50 A | 23 | 100% |  |  | Patrick van Batenburg | 0.5h | 0.5h | 27.5 | 27.5 |
| 25 | 3.4 | Ontwerp datadictionary |  | 15min | 2017-02-21 08:00 A | 2017-02-21 08:35 A | 24 | 100% |  |  | Steven Logghe | 0.25h | 0.25h | 13.75 | 13.75 |
| 26 | 3.5 | Sequentiediagrammen |  | 220min | 2017-02-23 08:00 A | 2017-02-23 12:20 A | 25 | 100% | finish no earlier than 2017-02-23 17:00 |  | Steven Logghe | 0.33h | 0.33h | 18.33 | 18.33 |
| 27 | 3.6 | Overzicht taakverdeling Inrichten van de ontwikkelomgeving |  | 10min | 2017-02-20 08:00 A | 2017-02-20 08:30 A | 26 | 100% |  |  | Patrick van Batenburg | 0.17h | 0.17h | 9.17 | 9.17 |

| ID | WBS | Task | Type | Duration | Start | Finish | Predecessors | Complete | Remaining | Total slack | Deadline | Resources | Work | Actual work | Cost | Actual cost |
| --- | --- | --- | --- | --- | --- | --- | --- | --- | --- | --- | --- | --- | --- | --- | --- | --- |
| 28 | 3.7 | **Inrichten van de ontwikkelomgeving** |  | 0.01d | 2017-02-20 08:00 A | 2017-02-20 08:25 A | 27 | 100% |  |  |  |  | 0.17h | 0.17h | 9.17 | 9.17 |
| 29 | 3.7.1 | Visual studio |  | 5min | 2017-02-20 08:00 A | 2017-02-20 08:25 A | 27 | 100% |  |  |  | Patrick van Batenburg | 0.08h | 0.08h | 4.58 | 4.58 |
| 30 | 3.7.2 | visual studio |  | 5min | 2017-02-20 08:00 A | 2017-02-20 08:25 A | 27 | 100% |  |  |  | Steven Logghe | 0.08h | 0.08h | 4.58 | 4.58 |
| 31 | 3.8 | Materialenlijst: Hard- en software van de ontwikkelomgeving |  | 90min | 2017-02-20 08:00 A | 2017-02-20 09:50 A | 28 | 100% |  |  |  | Steven Logghe | 1.5h | 1.5h | 82.5 | 82.5 |
| 32 | 3.9 | Back-up procedure |  | 60min | 2017-02-22 08:00 A | 2017-02-22 09:20 A | 31 | 100% |  |  |  | Steven Logghe | 1h | 1h | 55 | 55 |
| 33 | 3.10 | Verslag over de installatie, configuratie en testen van de testomgeving |  | 30min | 2017-02-22 08:00 A | 2017-02-22 08:50 A | 32 | 100% |  |  |  | Patrick van Batenburg | 0.5h | 0.5h | 27.5 | 27.5 |
| 34 | 4 | End Elaboration Phase | milestone | 0d | 2017-02-23 08:00 A | 2017-02-23 08:00 A | 21 | 100% |  |  | 2017-02-24 17:00 |  |  |  |  |  |
| 35 | 5 | **Construction Phase** |  | 1.04d | 2017-02-23 08:00 A | 2017-03-06 09:20 | 34 | 23% | 0.8d | 0d |  |  | 10.17h | 2.17h | 559.17 | 119.17 |
| 36 | 5.1 | Organisatieonderzoek over reeds gebruikte databases/te gebruiken database |  | 60min | 2017-02-23 08:00 A | 2017-02-23 09:20 A | 34 | 100% |  |  |  | Patrick van Batenburg | 1h | 1h | 55 | 55 |
| 37 | 5.2 | Genormaliseerd databaseontwerp |  | 40min | 2017-02-24 09:10 A | 2017-02-24 09:50 A | 36 | 100% |  |  |  | Steven Logghe | 0.67h | 0.67h | 36.67 | 36.67 |
| 38 | 5.3 | Definitieve datadictionary |  | 30min | 2017-02-24 09:50 A | 2017-02-24 10:40 A | 37 | 100% |  |  |  | Steven Logghe | 0.5h | 0.5h | 27.5 | 27.5 |
| 39 | 5.4 | De database (gebouwd) |  | 10min | 2017-02-24 10:40 | 2017-02-24 10:50 | 38 |  |  | 0d |  | Steven Logghe | 0.17h |  | 9.17 |  |
| 40 | 5.5 | **Werkende solution/webapplicatie (v1.0.0). Alle functionaliteit is gerealiseerd.** |  | 0.12d | 2017-02-24 10:50 | 2017-02-24 11:50 | 39 |  |  | 0d |  |  | 6.33h |  | 348.33 |  |
| 41 | 5.5.1 | Database handler |  | 60min | 2017-02-24 10:50 | 2017-02-24 11:50 |  |  |  | 0d |  | Patrick van Batenburg | 1h |  | 55 |  |
| 42 | 5.5.2 | Registratiesysteem |  | 60min | 2017-02-24 10:50 | 2017-02-24 11:50 | 39 |  |  | 0d |  | Steven Logghe | 1h |  | 55 |  |
| 43 | 5.5.3 | Inlogsysteem |  | 60min | 2017-02-24 10:50 | 2017-02-24 11:50 | 39 |  |  | 0d |  | Patrick van Batenburg | 1h |  | 55 |  |
| 44 | 5.5.4 | Create taak |  | 40min | 2017-02-24 10:50 | 2017-02-24 11:30 | 39 |  |  | 0.04d |  | Patrick van Batenburg; Steven Logghe | 1.33h |  | 73.33 |  |
| 45 | 5.5.5 | Read taak |  | 40min | 2017-02-24 10:50 | 2017-02-24 11:30 | 39 |  |  | 0.04d |  | Steven Logghe | 0.67h |  | 36.67 |  |
| 46 | 5.5.6 | Update taak |  | 40min | 2017-02-24 10:50 | 2017-02-24 11:30 | 39 |  |  | 0.04d |  | Patrick van Batenburg | 0.67h |  | 36.67 |  |
| 47 | 5.5.7 | Delete taak |  | 40min | 2017-02-24 10:50 | 2017-02-24 11:30 | 39 |  |  | 0.04d |  | Steven Logghe | 0.67h |  | 36.67 |  |
| 48 | 5.6 | Dataset (Lijsten van ingevoerde en dus geteste data) |  | 20min | 2017-02-24 11:50 | 2017-02-24 12:10 | 40 |  |  | 0d |  | Steven Logghe | 0.33h |  | 18.33 |  |
| 49 | 5.7 | Technische test is gemaakt. |  | 15min | 2017-02-24 12:10 | 2017-03-06 08:25 | 48 |  |  | 0d |  | Patrick van Batenburg | 0.25h |  | 13.75 |  |
| 50 | 5.8 | Technische test is uitgevoerd |  | 20min | 2017-03-06 08:25 | 2017-03-06 08:45 | 49 |  |  | 0d |  | Steven Logghe | 0.33h |  | 18.33 |  |
| 51 | 5.9 | Functionele test is gemaakt. |  | 15min | 2017-03-06 08:45 | 2017-03-06 09:00 | 50 |  |  | 0d |  | Patrick van Batenburg | 0.25h |  | 13.75 |  |
| 52 | 5.10 | Functionele test is uitgevoerd. |  | 20min | 2017-03-06 09:00 | 2017-03-06 09:20 | 51 |  |  | 0d |  | Steven Logghe | 0.33h |  | 18.33 |  |
| 53 | 6 | End Construction Phase | milestone | 0d | 2017-03-06 09:20 | 2017-03-06 09:20 | 35 |  |  | 0d |  |  |  |  |  |  |

| ID | WBS | Task | Duration | Start | Finish | Predecessors | Total slack | Resources | Work | Cost |
| --- | --- | --- | --- | --- | --- | --- | --- | --- | --- | --- |
| 54 | 7 | **Transition Phase** | 6d | 2017-03-06 09:20 | 2017-03-29 09:40 | 53 | 0d |  | 40h | 2,200 |
| 55 | 7.1 | Acceptatietest is uitgevoerd bij (gebruiker van) de opdrachtgever. | 1d | 2017-03-06 09:20 | 2017-03-09 10:00 | 53 | 0d | Steven Logghe | 8h | 440 |
| 56 | 7.2 | Gebruikershandleiding | 1d | 2017-03-09 10:20 | 2017-03-13 11:00 | 55 | 0d | Steven Logghe | 8h | 440 |
| 57 | 7.3 | Projectrapport | 1d | 2017-03-13 11:00 | 2017-03-16 11:40 | 56 | 0d | Patrick van Batenburg | 8h | 440 |
| 58 | 7.4 | Teamrapport (= individuele reflectie) | 1d | 2017-03-16 11:40 | 2017-03-20 12:20 | 57 | 0d | Patrick van Batenburg; Steven Logghe | 16h | 880 |
| 59 | 7.5 | Presentatie | 1d | 2017-03-22 08:20 | 2017-03-24 09:00 | 58 | 0d |  |  |  |
| 60 | 7.6 | Logboek Tijdregistratie | 1d | 2017-03-24 09:00 | 2017-03-29 09:40 | 59 | 0d |  |  |  |
| 61 | 8 | End Transition Phase | 1d? | 2017-03-29 09:40 | 2017-03-31 10:40 | 60 | 0d |  |  |  |
