# Planning

Schedule from MS Project, 2017-02-13 to 2017-03-31, costs in €, A marks actual dates.

## Calendars

- Standard: Mon 08:20-10:00, 10:20-12:20; Tue off; Wed-Fri 08:20-10:00, 10:20-12:20; Sat-Sun off. Exceptions (off unless hours are given): 2017-02-27 to 2017-03-03 (Carnaval).

## Resources

| Resource | Rate |
| --- | --- |
| Patrick van Batenburg | 55 |
| Steven Logghe | 55 |

## Schedule

| ID | WBS | Task | Type | Duration | Start | Finish | Predecessors | Complete | Constraint | Deadline | Resources | Work | Actual work | Cost | Actual cost |
| --- | --- | --- | --- | --- | --- | --- | --- | --- | --- | --- | --- | --- | --- | --- | --- |
| 1 | 1 | **Inception Phase** |  | 1.83d | 2017-02-13 08:00 A | 2017-02-17 17:00 A |  | 100% |  | 2017-02-24 17:00 |  | 44.67h | 44.67h | 2,456.67 | 2,456.67 |
| 2 | 1.1 | Interview voorbereiden |  | 480min | 2017-02-13 08:00 A | 2017-02-13 17:00 A |  | 100% | finish no earlier than 2017-02-13 17:00 |  | Patrick van Batenburg | 8h | 8h | 440 | 440 |
| 3 | 1.2 | Hernieuwde opdracht |  | 930min | 2017-02-13 08:30 A | 2017-02-15 10:50 A | 2 | 100% | finish no earlier than 2017-02-14 17:00 |  | Patrick van Batenburg | 15.5h | 15.5h | 852.5 | 852.5 |
| 4 | 1.3 | Offerte |  | 50min | 2017-02-15 08:00 A | 2017-02-15 08:50 A | 3 | 100% |  |  | Patrick van Batenburg | 0.83h | 0.83h | 45.83 | 45.83 |
| 5 | 1.4 | Prototype van shermen gebaseerd op interview |  | 60min | 2017-02-16 08:00 A | 2017-02-16 09:00 A | 4 | 100% |  |  | Steven Logghe | 1h | 1h | 55 | 55 |
| 6 | 1.5 | Prototype toelichting volgordelijkheid |  | 40min | 2017-02-16 08:30 A | 2017-02-16 09:10 A | 5 | 100% |  |  | Patrick van Batenburg | 0.67h | 0.67h | 36.67 | 36.67 |
| 7 | 1.6 | Plan van aanpak |  | 930min | 2017-02-16 08:30 A | 2017-02-17 17:00 A | 6 | 100% | finish no earlier than 2017-02-17 17:00 |  | Patrick van Batenburg | 15.5h | 15.5h | 852.5 | 852.5 |
| 8 | 1.7 | Globale planning voor het gehele project in een planningstool (bijvoorbeeld in MS-Project) |  | 30min | 2017-02-13 08:00 A | 2017-02-13 08:30 A | 7 | 100% |  |  | Patrick van Batenburg | 0.5h | 0.5h | 27.5 | 27.5 |
| 9 | 1.8 | Functioneel Ontwerp inclusief taakverdeeling |  | 40min | 2017-02-17 08:00 A | 2017-02-17 09:00 A | 8 | 100% |  |  | Patrick van Batenburg | 0.67h | 0.67h | 36.67 | 36.67 |
| 10 | 1.9 | **Use-case diagram** |  | 0.04d | 2017-02-16 08:00 A | 2017-02-16 08:40 A | 9 | 100% |  |  |  | 0.5h | 0.5h | 27.5 | 27.5 |
| 11 | 1.9.1 | Selecteer actoren en use-cases en plaats een titel boven het te maken diagram |  | 20min | 2017-02-16 08:00 A | 2017-02-16 08:40 A |  | 100% |  |  | Steven Logghe | 0.33h | 0.33h | 18.33 | 18.33 |
| 12 | 1.9.2 | Bepaal per use-case welke actor(en) verantwoordelijk zijn |  | 10min | 2017-02-16 08:00 A | 2017-02-16 08:30 A |  | 100% |  |  | Steven Logghe | 0.17h | 0.17h | 9.17 | 9.17 |
| 13 | 1.10 | **Use-case templates** |  | 0.06d | 2017-02-16 08:00 A | 2017-02-16 08:50 A | 10 | 100% |  |  |  | 0.67h | 0.67h | 36.67 | 36.67 |
| 14 | 1.10.1 | Selecteer actoren en plaats een titel boven het te maken template |  | 10min | 2017-02-16 08:00 A | 2017-02-16 08:30 A |  | 100% |  |  | Steven Logghe | 0.17h | 0.17h | 9.17 | 9.17 |
| 15 | 1.10.2 | Use-case templates maken doormiddel van de use-case diagrammen |  | 30min | 2017-02-16 08:00 A | 2017-02-16 08:50 A |  | 100% |  |  | Steven Logghe | 0.5h | 0.5h | 27.5 | 27.5 |
| 16 | 1.11 | **Activiteitendiagrammen** |  | 0.04d | 2017-02-17 08:20 A | 2017-02-17 08:40 A | 13 | 100% |  |  |  | 0.83h | 0.83h | 45.83 | 45.83 |
| 17 | 1.11.1 | Selecteer operaties en/of use-cases en plaats een titel boven het te maken diagram |  | 20min | 2017-02-17 08:20 A | 2017-02-17 08:40 A |  | 100% | start no earlier than 2017-02-17 08:00 |  | Steven Logghe | 0.33h | 0.33h | 18.33 | 18.33 |
| 18 | 1.11.2 | Vind de activiteiten en de bijbehorende flow of control |  | 20min | 2017-02-17 08:20 A | 2017-02-17 08:40 A |  | 100% | start no earlier than 2017-02-17 08:20 |  | Steven Logghe | 0.33h | 0.33h | 18.33 | 18.33 |
| 19 | 1.11.3 | Bepaal per activiteit welk object verantwoordelijk is |  | 10min | 2017-02-17 08:20 A | 2017-02-17 08:30 A |  | 100% | start no earlier than 2017-02-17 08:20 |  | Steven Logghe | 0.17h | 0.17h | 9.17 | 9.17 |
| 20 | 2 | End Inception Phase | milestone | 0d | 2017-02-24 08:00 A | 2017-02-24 08:00 A | 1 | 100% | start no earlier than 2017-02-24 08:00 | 2017-02-24 17:00 |  |  |  |  |  |
| 21 | 3 | **Elaboration Phase** |  | 1.5d | 2017-02-20 08:00 A | 2017-02-24 09:20 A | 20 | 100% |  | 2017-02-24 17:00 |  | 8h | 8h | 440 | 440 |
| 22 | 3.1 | Technisch Ontwerp inclusief taakverdeling |  | 50min | 2017-02-23 08:00 A | 2017-02-23 09:10 A | 20 | 100% |  |  | Patrick van Batenburg | 0.83h | 0.83h | 45.83 | 45.83 |
| 23 | 3.2 | Modeldictionary |  | 220min | 2017-02-22 08:00 A | 2017-02-22 12:20 A | 22 | 100% | finish no earlier than 2017-02-22 17:00 |  | Patrick van Batenburg | 0.33h | 0.33h | 18.33 | 18.33 |
| 24 | 3.3 | Klassendiagram |  | 30min | 2017-02-20 08:00 A | 2017-02-20 08:50 A | 23 | 100% |  |  | Patrick van Batenburg | 0.5h | 0.5h | 27.5 | 27.5 |
| 25 | 3.4 | Ontwerp datadictionary |  | 15min | 2017-02-21 08:00 A | 2017-02-21 08:35 A | 24 | 100% |  |  | Steven Logghe | 0.25h | 0.25h | 13.75 | 13.75 |
| 26 | 3.5 | Sequentiediagrammen |  | 220min | 2017-02-23 08:00 A | 2017-02-23 12:20 A | 25 | 100% | finish no earlier than 2017-02-23 17:00 |  | Steven Logghe | 0.33h | 0.33h | 18.33 | 18.33 |
| 27 | 3.6 | Overzicht taakverdeling Inrichten van de ontwikkelomgeving |  | 10min | 2017-02-20 08:00 A | 2017-02-20 08:30 A | 26 | 100% |  |  | Patrick van Batenburg | 0.17h | 0.17h | 9.17 | 9.17 |

| ID | WBS | Task | Type | Duration | Start | Finish | Predecessors | Complete | Remaining | Total slack | Free slack | Constraint | Deadline | Resources | Work | Actual work | Cost | Actual cost |
| --- | --- | --- | --- | --- | --- | --- | --- | --- | --- | --- | --- | --- | --- | --- | --- | --- | --- | --- |
| 28 | 3.7 | **Inrichten van de ontwikkelomgeving** |  | 1.5d | 2017-02-20 08:00 A | 2017-02-24 09:20 A | 27 | 100% |  |  |  |  |  |  | 2.58h | 2.58h | 142.08 | 142.08 |
| 29 | 3.7.1 | Visual studio configureren |  | 5min | 2017-02-20 08:00 A | 2017-02-20 08:25 A | 27 | 100% |  |  |  | start no earlier than 2017-02-20 08:00 |  | Patrick van Batenburg | 0.08h | 0.08h | 4.58 | 4.58 |
| 30 | 3.7.2 | Visual studio configureren |  | 5min | 2017-02-20 08:00 A | 2017-02-20 08:25 A | 27 | 100% |  |  |  | start no earlier than 2017-02-20 08:00 |  | Steven Logghe | 0.08h | 0.08h | 4.58 | 4.58 |
| 31 | 3.7.3 | Windows Phone Emulators installeren |  | 30min | 2017-02-20 08:00 A | 2017-02-20 08:50 A | 29 | 100% |  |  |  | start no earlier than 2017-02-20 08:00 |  | Patrick van Batenburg | 0.5h | 0.5h | 27.5 | 27.5 |
| 32 | 3.7.4 | Windows Phone Emulators installeren |  | 30min | 2017-02-20 08:00 A | 2017-02-20 08:50 A | 30 | 100% |  |  |  | start no earlier than 2017-02-20 08:00 |  | Steven Logghe | 0.5h | 0.5h | 27.5 | 27.5 |
| 33 | 3.7.5 | Naar Windows 8.1 Professional |  | 15min | 2017-02-23 08:00 A | 2017-02-23 08:35 A |  | 100% |  |  |  | start no earlier than 2017-02-20 08:00 |  | Patrick van Batenburg | 0.25h | 0.25h | 13.75 | 13.75 |
| 34 | 3.7.6 | Naar Windows 8.1 Professional |  | 60min | 2017-02-24 08:20 A | 2017-02-24 09:20 A |  | 100% |  |  |  | start no earlier than 2017-02-20 08:00 |  | Steven Logghe | 1h | 1h | 55 | 55 |
| 35 | 3.7.7 | Microsoft Hyper-V gebruiken |  | 5min | 2017-02-24 08:00 A | 2017-02-24 08:25 A | 33 | 100% |  |  |  | start no earlier than 2017-02-20 08:00 |  | Patrick van Batenburg | 0.08h | 0.08h | 4.58 | 4.58 |
| 36 | 3.7.8 | Microsoft Hyper-V gebruiken |  | 5min | 2017-02-24 08:20 A | 2017-02-24 08:25 A | 34 | 100% |  |  |  | start no earlier than 2017-02-20 08:00 |  | Steven Logghe | 0.08h | 0.08h | 4.58 | 4.58 |
| 37 | 3.8 | Materialenlijst: Hard- en software van de ontwikkelomgeving |  | 90min | 2017-02-20 08:00 A | 2017-02-20 09:50 A | 28 | 100% |  |  |  |  |  | Steven Logghe | 1.5h | 1.5h | 82.5 | 82.5 |
| 38 | 3.9 | Back-up procedure |  | 60min | 2017-02-22 08:00 A | 2017-02-22 09:20 A | 37 | 100% |  |  |  |  |  | Steven Logghe | 1h | 1h | 55 | 55 |
| 39 | 3.10 | Verslag over de installatie, configuratie en testen van de testomgeving |  | 30min | 2017-02-22 08:00 A | 2017-02-22 08:50 A | 38 | 100% |  |  |  |  |  | Patrick van Batenburg | 0.5h | 0.5h | 27.5 | 27.5 |
| 40 | 4 | End Elaboration Phase | milestone | 0d | 2017-02-23 08:00 A | 2017-02-23 08:00 A | 21 | 100% |  |  |  |  | 2017-02-24 17:00 |  |  |  |  |  |
| 41 | 5 | **Construction Phase** |  | 6.42d? | 2017-02-23 08:00 A | 2017-03-24 17:00 | 40 | 90% | 0.64d? | 0.46d | 0d |  |  |  | 96.84h | 87.84h | 5,326.38 | 4,831.38 |
| 42 | 5.1 | Organisatieonderzoek over reeds gebruikte databases/te gebruiken database |  | 60min | 2017-02-23 08:00 A | 2017-02-23 09:20 A | 40 | 100% |  |  |  |  |  | Patrick van Batenburg | 1h | 1h | 55 | 55 |
| 43 | 5.2 | Genormaliseerd databaseontwerp |  | 40min | 2017-02-24 09:10 A | 2017-02-24 09:50 A | 42 | 100% |  |  |  |  |  | Steven Logghe | 0.67h | 0.67h | 36.67 | 36.67 |
| 44 | 5.3 | Definitieve datadictionary |  | 30min | 2017-02-24 09:50 A | 2017-02-24 10:40 A | 43 | 100% |  |  |  |  |  | Steven Logghe | 0.5h | 0.5h | 27.5 | 27.5 |
| 45 | 5.4 | De database (gebouwd) |  | 10min | 2017-02-24 10:40 | 2017-02-24 10:50 | 44 |  |  | 0.66d | 0d |  |  | Patrick van Batenburg | 0.17h |  | 9.17 |  |
| 46 | 5.5 | Een procedure voor het aanleveren van databasegegevens |  | 1d? | 2017-02-24 10:50 | 2017-03-08 11:30 | 45 |  |  | 5.15d |  |  |  | Steven Logghe | 8h |  | 440 |  |
| 47 | 5.6 | Materialen- en middelenlijst voor het realiseren van de applicatie |  | 5min | 2017-03-07 08:00 A | 2017-03-08 08:25 A | 46 | 100% |  |  |  |  |  | Patrick van Batenburg | 0.08h | 0.08h | 4.58 | 4.58 |
| 48 | 5.7 | **Werkende solution/webapplicatie (v1.0.0). Alle functionaliteit is gerealiseerd.** |  | 5.05d | 2017-03-06 08:00 A | 2017-03-24 08:22 A | 47 | 100% |  |  |  |  |  |  | 85.51h | 85.51h | 4,703.05 | 4,703.05 |
| 49 | 5.7.1 | **ViewModels** |  | 0.08d | 2017-03-15 08:20 A | 2017-03-15 08:59 A |  | 100% |  |  |  |  |  |  | 1.31h | 1.31h | 71.87 | 71.87 |
| 50 | 5.7.1.1 | TaskViewModel |  | 0.04d | 2017-03-15 08:39 A | 2017-03-15 08:59 A | 53 | 100% |  |  |  | start no earlier than 2017-03-15 08:00 |  | Patrick van Batenburg | 0.33h | 0.33h | 18.33 | 18.33 |
| 51 | 5.7.1.2 | UserMetaViewModel |  | 0.04d | 2017-03-15 08:39 A | 2017-03-15 08:59 A | 53 | 100% |  |  |  | start no earlier than 2017-03-15 08:20 |  | Patrick van Batenburg | 0.33h | 0.33h | 18.33 | 18.33 |
| 52 | 5.7.1.3 | UserViewModel |  | 0.04d | 2017-03-15 08:39 A | 2017-03-15 08:58 A | 53 | 100% |  |  |  | start no earlier than 2017-03-15 08:20 |  | Patrick van Batenburg | 0.32h | 0.32h | 17.6 | 17.6 |
| 53 | 5.7.1.4 | ViewModelBase |  | 0.04d | 2017-03-15 08:20 A | 2017-03-15 08:39 A |  | 100% |  |  |  |  |  | Patrick van Batenburg | 0.32h | 0.32h | 17.6 | 17.6 |

| ID | WBS | Task | Duration | Start | Finish | Predecessors | Complete | Total slack | Free slack | Constraint | Resources | Work | Actual work | Cost | Actual cost |
| --- | --- | --- | --- | --- | --- | --- | --- | --- | --- | --- | --- | --- | --- | --- | --- |
| 54 | 5.7.2 | **Models** | 0.01d | 2017-03-09 08:20 A | 2017-03-09 08:25 A |  | 100% |  |  |  |  | 0.25h | 0.25h | 13.57 | 13.57 |
| 55 | 5.7.2.1 | Task | 0.01d | 2017-03-09 08:20 A | 2017-03-09 08:25 A |  | 100% |  |  | start no earlier than 2017-03-09 08:00 | Patrick van Batenburg | 0.08h | 0.08h | 4.58 | 4.58 |
| 56 | 5.7.2.2 | User | 0.01d | 2017-03-09 08:20 A | 2017-03-09 08:25 A |  | 100% |  |  | start no earlier than 2017-03-09 08:00 | Patrick van Batenburg | 0.08h | 0.08h | 4.58 | 4.58 |
| 57 | 5.7.2.3 | UserMeta | 0.01d | 2017-03-09 08:20 A | 2017-03-09 08:24 A | 45 | 100% |  |  | start no earlier than 2017-03-09 08:00 | Patrick van Batenburg | 0.08h | 0.08h | 4.4 | 4.4 |
| 58 | 5.7.3 | **Views** | 5.05d | 2017-03-06 08:00 A | 2017-03-24 08:22 A |  | 100% |  |  |  |  | 83.96h | 83.96h | 4,617.62 | 4,617.62 |
| 59 | 5.7.3.1 | **EditTaskPage** | 1.38d | 2017-03-20 08:00 A | 2017-03-24 08:22 A |  | 100% |  |  |  |  | 22.04h | 22.04h | 1,212.2 | 1,212.2 |
| 60 | 5.7.3.1.1 | Design | 1.38d | 2017-03-20 08:00 A | 2017-03-23 17:00 A |  | 100% |  |  | finish no earlier than 2017-03-23 17:00 | Steven Logghe | 11h | 11h | 605 | 605 |
| 61 | 5.7.3.1.2 | CodeBehind | 1.38d | 2017-03-20 08:00 A | 2017-03-24 08:22 A |  | 100% |  |  | finish no earlier than 2017-03-23 17:00 | Steven Logghe | 11.04h | 11.04h | 607.2 | 607.2 |
| 62 | 5.7.3.2 | **LoginPage** | 0.46d | 2017-03-06 08:00 A | 2017-03-07 17:00 A |  | 100% |  |  |  |  | 7.33h | 7.33h | 403.33 | 403.33 |
| 63 | 5.7.3.2.1 | Design | 3.67h | 2017-03-06 08:00 A | 2017-03-07 17:00 A |  | 100% |  |  | finish no earlier than 2017-03-07 17:00 | Patrick van Batenburg | 3.67h | 3.67h | 201.67 | 201.67 |
| 64 | 5.7.3.2.2 | CodeBehind | 0.46d | 2017-03-06 08:00 A | 2017-03-07 17:00 A |  | 100% |  |  | finish no earlier than 2017-03-07 17:00 | Steven Logghe | 3.67h | 3.67h | 201.67 | 201.67 |
| 65 | 5.7.3.3 | **MainPage** | 0.25d | 2017-03-06 08:00 A | 2017-03-06 10:40 A |  | 100% |  |  |  |  | 4h | 4h | 220 | 220 |
| 66 | 5.7.3.3.1 | Design | 0.25d | 2017-03-06 08:00 A | 2017-03-06 10:40 A |  | 100% |  |  |  | Patrick van Batenburg | 2h | 2h | 110 | 110 |
| 67 | 5.7.3.3.2 | CodeBehind | 0.25d | 2017-03-06 08:00 A | 2017-03-06 10:40 A |  | 100% |  |  |  | Patrick van Batenburg | 2h | 2h | 110 | 110 |
| 68 | 5.7.3.4 | **RegisterPage** | 0.92d | 2017-03-06 08:00 A | 2017-03-08 17:00 A |  | 100% |  |  |  |  | 7.33h | 7.33h | 403.33 | 403.33 |
| 69 | 5.7.3.4.1 | Design | 220min | 2017-03-06 08:00 A | 2017-03-06 17:00 A |  | 100% |  |  | finish no earlier than 2017-03-06 17:00 | Patrick van Batenburg | 3.67h | 3.67h | 201.67 | 201.67 |
| 70 | 5.7.3.4.2 | CodeBehind | 0.46d | 2017-03-08 08:00 A | 2017-03-08 17:00 A |  | 100% |  |  | finish no earlier than 2017-03-08 17:00 | Steven Logghe | 3.67h | 3.67h | 201.67 | 201.67 |
| 71 | 5.7.3.5 | **StartPage** | 0.5d | 2017-03-08 08:25 A | 2017-03-09 08:45 A |  | 100% |  |  |  |  | 4.17h | 4.17h | 229.17 | 229.17 |
| 72 | 5.7.3.5.1 | Design | 10min | 2017-03-08 08:25 A | 2017-03-08 08:35 A |  | 100% |  |  |  | Steven Logghe | 0.17h | 0.17h | 9.17 | 9.17 |
| 73 | 5.7.3.5.2 | CodeBehind | 4h | 2017-03-08 08:25 A | 2017-03-09 08:45 A |  | 100% |  |  |  | Patrick van Batenburg | 4h | 4h | 220 | 220 |
| 74 | 5.7.3.6 | **ViewTaskPage** | 3.2d | 2017-03-13 08:00 A | 2017-03-23 12:15 A |  | 100% |  |  |  |  | 24.17h | 24.17h | 1,329.17 | 1,329.17 |
| 75 | 5.7.3.6.1 | Design | 10min | 2017-03-13 08:00 A | 2017-03-13 08:30 A |  | 100% |  |  | finish no earlier than 2017-03-13 17:00 | Steven Logghe | 0.17h | 0.17h | 9.17 | 9.17 |
| 76 | 5.7.3.6.2 | CodeBehind | 3d | 2017-03-13 08:00 A | 2017-03-23 12:15 A |  | 100% |  |  | finish no earlier than 2017-03-23 12:15 | Patrick van Batenburg | 24h | 24h | 1,320 | 1,320 |
| 77 | 5.7.3.7 | **AddTaskPage** | 1.83d | 2017-03-08 08:00 A | 2017-03-13 17:00 A |  | 100% |  |  |  |  | 14.92h | 14.92h | 820.42 | 820.42 |
| 78 | 5.7.3.7.1 | Design | 15min | 2017-03-08 08:25 A | 2017-03-08 08:40 A |  | 100% |  |  |  | Patrick van Batenburg | 0.25h | 0.25h | 13.75 | 13.75 |
| 79 | 5.7.3.7.2 | CodeBehind | 880min | 2017-03-08 08:00 A | 2017-03-13 17:00 A | 45 | 100% |  |  | finish no earlier than 2017-03-13 17:00 | Patrick van Batenburg | 14.67h | 14.67h | 806.67 | 806.67 |
| 80 | 5.8 | Klassendiagram vanuit Visual Studio | 5min | 2017-03-24 12:15 A | 2017-03-24 17:00 A | 48 | 100% |  |  | finish no earlier than 2017-03-24 17:00 | Patrick van Batenburg | 0.08h | 0.08h | 4.58 | 4.58 |
| 81 | 5.9 | Lijst van test-tools (code-checkers) | 20min | 2017-03-24 08:22 | 2017-03-24 08:42 | 48 |  | 0.81d | 0d |  | Steven Logghe | 0.33h |  | 18.33 |  |

| ID | WBS | Task | Type | Duration | Start | Finish | Predecessors | Total slack | Free slack | Constraint | Resources | Work | Cost |
| --- | --- | --- | --- | --- | --- | --- | --- | --- | --- | --- | --- | --- | --- |
| 82 | 5.10 | **Technische test** |  | 0.07d | 2017-03-24 08:42 | 2017-03-24 09:17 |  | 0.72d |  |  |  | 0.25h | 13.75 |
| 83 | 5.10.1 | Technische test is gemaakt. |  | 15min | 2017-03-24 08:42 | 2017-03-24 08:57 | 81 | 0.81d | 0d |  | Steven Logghe | 0.25h | 13.75 |
| 84 | 5.10.2 | Technische test is uitgevoerd |  | 20min | 2017-03-24 08:57 | 2017-03-24 09:17 | 83 | 0.81d | 0d |  |  |  |  |
| 85 | 5.11 | **Functionele test** |  | 0.07d | 2017-03-24 09:17 | 2017-03-24 09:52 |  | 0.72d |  |  |  | 0.25h | 13.75 |
| 86 | 5.11.1 | Functionele test is gemaakt. |  | 15min | 2017-03-24 09:17 | 2017-03-24 09:32 | 84 | 0.72d | 0d |  | Steven Logghe | 0.25h | 13.75 |
| 87 | 5.11.2 | Functionele test is uitgevoerd. |  | 20min | 2017-03-24 09:32 | 2017-03-24 09:52 | 86 | 0.72d |  |  |  |  |  |
| 88 | 6 | End Construction Phase | milestone | 0d | 2017-03-24 17:00 | 2017-03-24 17:00 | 41 | 0.46d | 0d |  |  |  |  |
| 89 | 7 | **Transition Phase** |  | 1.46d? | 2017-03-27 08:20 | 2017-03-31 09:00 | 88 | 0d |  |  |  | 64h | 3,520 |
| 90 | 7.1 | Een implementatieplan (technische en organisatorisch), besproken met de opdrachtgever |  | 1d | 2017-03-29 08:20 | 2017-03-31 09:00 |  | 0d |  | start no earlier than 2017-03-29 08:00 | Steven Logghe | 8h | 440 |
| 91 | 7.2 | **Acceptatietest** |  | 1d? | 2017-03-29 08:20 | 2017-03-31 09:00 |  | 0d |  |  |  | 24h | 1,320 |
| 92 | 7.2.1 | Maak een acceptatietest voor de opdrachtgever en leg uit hoe deze uitgevoerd moet worden |  | 1d? | 2017-03-29 08:20 | 2017-03-31 09:00 |  | 0d |  | start no earlier than 2017-03-29 08:00 | Patrick van Batenburg | 8h | 440 |
| 93 | 7.2.2 | Acceptatietest uitgevoerd en ondertekend door opdrachtgever |  | 1d? | 2017-03-29 08:20 | 2017-03-31 09:00 |  | 0d |  | start no earlier than 2017-03-29 08:00 | Patrick van Batenburg | 8h | 440 |
| 94 | 7.2.3 | Verslag van de resultaten |  | 1d | 2017-03-29 08:20 | 2017-03-31 09:00 |  | 0d |  | start no earlier than 2017-03-29 08:00 | Patrick van Batenburg | 8h | 440 |
| 95 | 7.3 | Documentatie van het implementeren van de applicatie in de productieomgeving |  | 1d? | 2017-03-29 08:20 | 2017-03-31 09:00 |  | 0d |  | start no earlier than 2017-03-29 08:00 | Steven Logghe | 8h | 440 |
| 96 | 7.4 | **Evaluatierapport** |  | 1.46d? | 2017-03-27 08:20 | 2017-03-31 09:00 |  | 0d |  |  |  | 24h | 1,320 |
| 97 | 7.4.1 | Evaluatierapport van het implementatietraject, waarin de gegevens, zoals besproken met de opdrachtgever, zijn vastgelegd |  | 1d? | 2017-03-27 08:20 | 2017-03-30 09:00 |  | 0.46d |  |  | Steven Logghe | 8h | 440 |
| 98 | 7.4.2 | Aangevuld zelfevaluatie |  | 1d? | 2017-03-27 08:20 | 2017-03-30 09:00 |  | 0.46d |  |  | Patrick van Batenburg | 8h | 440 |
| 99 | 7.4.3 | Aangevuld zelfevaluatie |  | 1d | 2017-03-29 08:20 | 2017-03-31 09:00 |  | 0d |  | start no earlier than 2017-03-28 08:00 | Steven Logghe | 8h | 440 |
| 100 | 8 | End Transition Phase |  | 1d? | 2017-02-13 08:20 | 2017-02-16 09:00 |  | 9.62d |  |  |  |  |  |
